# Simple Project Plan

Schedule from MS Project, 2017-07-07 to 2017-10-03, A marks actual dates.

## Calendars

- Standard: Mon-Fri 08:00-12:00, 13:00-17:00; Sat-Sun off.

## Resources

| Resource |
| --- |
| 吴小刚 |
| 李林 |

## Schedule

| ID | WBS | Task | Type | Duration | Start | Finish | Predecessors | Complete | Remaining | Actual start | Actual finish | Constraint | Resources | Work | Actual work |
| --- | --- | --- | --- | --- | --- | --- | --- | --- | --- | --- | --- | --- | --- | --- | --- |
| 1 | 1 | **计划** |  | 4d | 2017-09-18 | 2017-09-21 |  | 74% | 1.04d | 2017-07-07 |  |  |  | 2208h | 1904.61h |
| 2 | 1.1 | 架构搭建 | manual | 10d | 2017-07-07 A | 2017-07-20 |  | 8% | 9.25d |  |  |  | 吴小刚 | 80h | 6h |
| 3 | 1.2 | **通用工具** |  | 4d | 2017-08-07 A | 2017-08-10 |  | 31% | 2.77d |  |  |  | 吴小刚 | 176h | 48h |
| 4 | 1.2.1 | 短信 | manual | 4d | 2017-08-07 A | 2017-08-10 |  | 50% | 2d |  |  |  | 吴小刚 | 32h | 16h |
| 5 | 1.2.2 | 邮件 | manual | 2d | 2017-08-11 A | 2017-08-14 |  | 50% | 1d |  |  |  | 吴小刚 | 16h | 8h |
| 6 | 1.2.3 | excel处理 | manual | 2d | 2017-08-15 A | 2017-08-16 |  | 50% | 1d |  |  |  | 吴小刚 | 16h | 8h |
| 7 | 1.2.4 | 规则引擎 | manual | 5d | 2017-09-25 | 2017-09-29 |  |  |  |  |  |  | 李林; 吴小刚 | 80h |  |
| 8 | 1.3 | **用户/员工/系统管理** |  | 37d | 2017-07-07 A | 2017-08-28 |  | 96% | 1.32d |  |  |  | 吴小刚 | 832h | 822h |
| 9 | 1.3.1 | 需求分析 |  | 2d | 2017-07-07 A | 2017-07-10 A |  | 100% |  |  |  |  | 吴小刚 | 16h | 16h |
| 10 | 1.3.2 | 方案设计 |  | 3d | 2017-07-13 A | 2017-07-17 A | 9 | 100% |  |  |  |  | 吴小刚 | 24h | 24h |
| 11 | 1.3.3 | 数据模型 |  | 4d | 2017-07-19 A | 2017-07-24 A | 9 | 100% |  |  |  |  | 吴小刚 | 32h | 32h |
| 12 | 1.3.4 | api文档编写 | manual | 5d | 2017-09-11 A | 2017-09-15 |  | 75% | 1.25d |  |  |  | 吴小刚 | 40h | 30h |
| 13 | 1.3.5 | **功能开发** |  | 25d | 2017-07-25 A | 2017-08-28 |  | 100% |  |  | 2017-08-29 |  | 吴小刚 | 424h | 424h |
| 14 | 1.3.5.1 | 登录服务 |  | 2d | 2017-07-25 A | 2017-07-26 A | 9, 10, 11, 24 | 100% |  |  |  |  | 吴小刚 | 16h | 16h |
| 15 | 1.3.5.2 | 系统域管理 |  | 2d | 2017-07-26 A | 2017-07-27 A | 9, 10, 11, 24 | 100% |  |  |  |  | 吴小刚 | 16h | 16h |
| 16 | 1.3.5.3 | 组织机构 | manual | 3d | 2017-07-28 A | 2017-08-01 A | 9, 10, 11, 24 | 100% |  |  |  | finish no earlier than 2017-07-28 | 吴小刚 | 24h | 24h |
| 17 | 1.3.5.4 | **用户管理** |  | 4d | 2017-08-02 A | 2017-08-07 | 9, 10, 11, 24 | 100% |  |  | 2017-08-09 |  | 吴小刚 | 48h | 48h |
| 18 | 1.3.5.4.1 | 批量导入 | manual | 2d | 2017-08-08 A | 2017-08-09 A | 9, 10, 11, 24 | 100% |  |  |  |  | 吴小刚 | 16h | 16h |
| 19 | 1.3.5.5 | 功能(权限)管理 |  | 3d | 2017-08-14 A | 2017-08-16 A | 9, 10, 11, 24 | 100% |  |  |  |  | 吴小刚 | 24h | 24h |
| 20 | 1.3.5.6 | 角色管理 | manual | 2d | 2017-08-07 A | 2017-08-08 A | 9, 10, 11, 24 | 100% |  |  |  |  | 吴小刚 | 16h | 16h |
| 21 | 1.3.5.7 | 菜单管理 |  | 2d | 2017-08-17 A | 2017-08-18 A | 9, 10, 11, 24 | 100% |  |  |  |  | 吴小刚 | 16h | 16h |
| 22 | 1.3.5.8 | 数据字典管理 |  | 2d | 2017-08-23 A | 2017-08-24 A | 9, 10, 11, 24 | 100% |  |  |  |  | 吴小刚 | 16h | 16h |
| 23 | 1.3.5.9 | **日志管理** |  | 3d | 2017-08-25 | 2017-08-29 A | 9, 10, 11 | 100% |  | 2017-08-21 |  |  | 吴小刚 | 48h | 48h |
| 24 | 1.3.5.9.1 | 自定义日志注解 | manual | 1d | 2017-08-21 A | 2017-08-21 A |  | 100% |  |  |  |  | 吴小刚 | 8h | 8h |
| 25 | 1.3.5.9.2 | 登录日志 | manual | 1d | 2017-08-22 A | 2017-08-22 A | 9, 10, 11, 24 | 100% |  |  |  |  | 吴小刚 | 8h | 8h |
| 26 | 1.3.5.9.3 | 操作日志 | manual | 1d | 2017-08-23 A | 2017-08-23 A | 9, 10, 11, 24 | 100% |  |  |  |  | 吴小刚 | 8h | 8h |

Notes:
- 1: 这是摘要任务。使用摘要任务以帮助您在节中组织项目。

| ID | WBS | Task | Type | Duration | Start | Finish | Complete | Remaining | Actual start | Actual finish | Total slack | Resources | Work | Actual work |
| --- | --- | --- | --- | --- | --- | --- | --- | --- | --- | --- | --- | --- | --- | --- |
| 27 | 1.4 | **用户/会员** |  | 22d | 2017-09-04 | 2017-10-03 | 80% | 4.4d | 2017-09-01 |  |  | 吴小刚 | 672h | 596.61h |
| 28 | 1.4.1 | 需求分析 | manual | 2d | 2017-09-13 A | 2017-09-14 A | 100% |  |  |  |  | 吴小刚 | 16h | 16h |
| 29 | 1.4.2 | 方案设计 | manual | 3d | 2017-09-13 A | 2017-09-15 A | 100% |  |  |  |  | 吴小刚 | 24h | 24h |
| 30 | 1.4.3 | 数据模型 | manual | 4d | 2017-09-13 A | 2017-09-18 A | 100% |  |  |  |  | 吴小刚 | 32h | 32h |
| 31 | 1.4.4 | api文档编写 | manual | 5d | 2017-09-18 | 2017-09-22 |  |  |  |  |  | 吴小刚 | 40h |  |
| 32 | 1.4.5 | **功能开发** |  | 14d | 2017-09-01 A | 2017-09-20 | 90% | 1.33d |  |  | 0d | 吴小刚 | 384h | 348.61h |
| 33 | 1.4.5.1 | **前台** |  | 6d | 2017-09-01 A | 2017-09-08 | 82% | 1.09d |  |  | 0d | 吴小刚 | 152h | 127.27h |
| 34 | 1.4.5.1.1 | 注册 | manual | 1d | 2017-09-04 A | 2017-09-04 A | 100% |  |  |  |  | 吴小刚 | 8h | 8h |
| 35 | 1.4.5.1.2 | 登录/登出+日志 | manual | 1d | 2017-09-01 A | 2017-09-01 A | 100% |  |  |  |  | 吴小刚 | 8h | 8h |
| 36 | 1.4.5.1.3 | **找回密码** |  | 1d | 2017-09-01 A | 2017-09-01 A | 100% |  |  |  |  | 吴小刚 | 24h | 24h |
| 37 | 1.4.5.1.3.1 | 密保手机找回 |  | 1d | 2017-09-01 A | 2017-09-01 A | 100% |  |  |  |  | 吴小刚 | 8h | 8h |
| 38 | 1.4.5.1.3.2 | 密保邮箱找回 | manual | 1d | 2017-09-01 A | 2017-09-01 A | 100% |  |  |  |  | 吴小刚 | 8h | 8h |
| 39 | 1.4.5.1.4 | **个人设置** |  | 5d | 2017-09-04 A | 2017-09-08 | 71% | 1.43d |  |  | 0d |  | 64h | 48h |
| 40 | 1.4.5.1.4.1 | 实名认证 | manual | 1d | 2017-09-07 A | 2017-09-07 A | 100% |  |  |  |  | 吴小刚 | 8h | 8h |
| 41 | 1.4.5.1.4.2 | **信息完善** |  | 1d | 2017-09-08 A | 2017-09-08 |  | 1d |  |  |  | 吴小刚 | 24h | 8h |
| 42 | 1.4.5.1.4.2.1 | 基本信息 | manual | 1d | 2017-09-08 | 2017-09-08 |  |  |  |  |  | 吴小刚 | 8h |  |
| 43 | 1.4.5.1.4.2.2 | 模板扩展信息 | manual | 1d | 2017-09-08 | 2017-09-08 |  |  |  |  |  | 吴小刚 | 8h |  |
| 44 | 1.4.5.1.4.3 | 登录密码-设置/修改 | manual | 1d | 2017-09-04 A | 2017-09-04 A | 100% |  |  |  |  | 吴小刚 | 8h | 8h |
| 45 | 1.4.5.1.4.4 | 手机号码-绑定/修改 | manual | 1d | 2017-09-06 A | 2017-09-06 A | 100% |  |  |  |  | 吴小刚 | 8h | 8h |
| 46 | 1.4.5.1.4.5 | 交易密码-设置/修改/找回 | manual | 1d | 2017-09-06 A | 2017-09-06 A | 100% |  |  |  |  | 吴小刚 | 8h | 8h |
| 47 | 1.4.5.1.4.6 | 电子邮箱-绑定/修改 | manual | 1d | 2017-09-07 A | 2017-09-07 A | 100% |  |  |  |  | 吴小刚 | 8h | 8h |
| 48 | 1.4.5.2 | **后台** |  | 13d | 2017-09-04 A | 2017-09-20 | 100% |  |  | 2017-09-06 |  |  | 120h | 120h |
| 49 | 1.4.5.2.1 | **客户** |  | 3d | 2017-09-04 A | 2017-09-06 A | 100% |  |  |  |  | 吴小刚 | 88h | 88h |
| 50 | 1.4.5.2.1.1 | **实名认证** |  | 1d | 2017-09-04 A | 2017-09-04 A | 100% |  |  |  |  | 吴小刚 | 16h | 16h |
| 51 | 1.4.5.2.1.1.1 | 客户实名认证日志 | manual | 1d | 2017-09-04 A | 2017-09-04 A | 100% |  |  |  |  | 吴小刚 | 8h | 8h |
| 52 | 1.4.5.2.1.2 | 会员信息 | manual | 1d | 2017-09-04 A | 2017-09-04 A | 100% |  |  |  |  | 吴小刚 | 8h | 8h |
| 53 | 1.4.5.2.1.3 | 账户快照快照 | manual | 1d | 2017-09-04 A | 2017-09-04 A | 100% |  |  |  |  | 吴小刚 | 8h | 8h |
| 54 | 1.4.5.2.1.4 | 标签设置 | manual | 1d | 2017-09-04 A | 2017-09-04 A | 100% |  |  |  |  | 吴小刚 | 8h | 8h |
| 55 | 1.4.5.2.1.5 | 黑名单设置 | manual | 1d | 2017-09-04 A | 2017-09-04 A | 100% |  |  |  |  | 吴小刚 | 8h | 8h |
| 56 | 1.4.5.2.1.6 | 登录日志 | manual | 1d | 2017-09-04 A | 2017-09-04 A | 100% |  |  |  |  | 吴小刚 | 8h | 8h |
| 57 | 1.4.5.2.1.7 | 网签协议记录 | manual | 1d | 2017-09-04 A | 2017-09-04 A | 100% |  |  |  |  | 吴小刚 | 8h | 8h |
| 58 | 1.4.5.2.2 | 业务类型 | manual | 1d | 2017-09-04 A | 2017-09-04 A | 100% |  |  |  |  | 吴小刚 | 8h | 8h |
| 59 | 1.4.5.2.3 | 标签管理 | manual | 1d | 2017-09-04 A | 2017-09-04 A | 100% |  |  |  |  | 吴小刚 | 8h | 8h |

| ID | WBS | Task | Type | Duration | Start | Finish | Complete | Remaining | Actual start | Total slack | Resources | Work | Actual work |
| --- | --- | --- | --- | --- | --- | --- | --- | --- | --- | --- | --- | --- | --- |
| 60 | 1.4.5.2.4 | **档案模板管理** |  | 1d | 2017-09-04 A | 2017-09-04 A | 100% |  |  |  | 吴小刚 | 16h | 16h |
| 61 | 1.4.5.2.4.1 | 模板属性 | manual | 1d | 2017-09-04 A | 2017-09-04 A | 100% |  |  |  | 吴小刚 | 8h | 8h |
| 62 | 1.5 | **用户/渠道商** |  | 26d | 2017-08-07 A | 2017-09-11 | 88% | 3.06d |  |  |  | 448h | 432h |
| 63 | 1.5.1 | 需求分析 | manual | 2d | 2017-08-07 A | 2017-08-08 A | 100% |  |  |  | 李林 | 16h | 16h |
| 64 | 1.5.2 | 方案设计 | manual | 2d | 2017-08-09 A | 2017-08-10 A | 100% |  |  |  | 李林 | 16h | 16h |
| 65 | 1.5.3 | 数据模型 | manual | 2d | 2017-08-11 A | 2017-08-14 A | 100% |  |  |  | 李林 | 16h | 16h |
| 66 | 1.5.4 | api文档编写 | manual | 5d | 2017-09-11 A | 2017-09-15 | 60% | 2d |  |  | 李林 | 40h | 24h |
| 67 | 1.5.5 | **功能开发** |  | 18d | 2017-08-15 | 2017-09-07 A | 100% |  | 2017-08-14 |  | 李林 | 360h | 360h |
| 68 | 1.5.5.1 | **前台** |  | 8d | 2017-08-15 A | 2017-08-24 A | 100% |  |  |  | 李林 | 88h | 88h |
| 69 | 1.5.5.1.1 | 登录/登出 | manual | 1d | 2017-08-15 A | 2017-08-15 A | 100% |  |  |  | 李林 | 8h | 8h |
| 70 | 1.5.5.1.2 | 找回密码 | manual | 1d | 2017-08-15 A | 2017-08-15 A | 100% |  |  |  | 李林 | 8h | 8h |
| 71 | 1.5.5.1.3 | 信息设置 | manual | 1d | 2017-08-15 A | 2017-08-15 A | 100% |  |  |  | 李林 | 8h | 8h |
| 72 | 1.5.5.2 | **后台** |  | 10d | 2017-08-14 A | 2017-08-25 A | 100% |  |  |  | 李林 | 128h | 128h |
| 73 | 1.5.5.2.1 | **渠道商维护** |  | 3d | 2017-08-14 A | 2017-08-16 A | 100% |  |  |  | 李林 | 32h | 32h |
| 74 | 1.5.5.2.1.1 | 批量导入 | manual | 1d | 2017-08-15 A | 2017-08-15 A | 100% |  |  |  | 李林 | 8h | 8h |
| 75 | 1.5.5.2.2 | 渠道商分类 | manual | 2d | 2017-08-17 A | 2017-08-18 A | 100% |  |  |  | 李林 | 16h | 16h |
| 76 | 2 | **账户/系统** |  | 5d | 2017-09-18 | 2017-09-22 |  |  |  |  |  | 160h |  |
| 77 | 2.1 | 需求分析 | manual | 1.5d | 2017-09-18 | 2017-09-19 |  |  |  |  | 李林; 吴小刚 | 24h |  |
| 78 | 2.2 | 方案设计 | manual | 1.5d | 2017-09-19 | 2017-09-20 |  |  |  |  | 李林; 吴小刚 | 24h |  |
| 79 | 2.3 | 数据模型 | manual | 2d | 2017-09-21 | 2017-09-22 |  |  |  |  | 李林; 吴小刚 | 32h |  |
| 80 | 2.4 | **功能开发** |  | 1d | 2017-09-18 | 2017-09-18 |  |  |  | 0d | 李林; 吴小刚 | 80h |  |
| 81 | 2.4.1 | **前台** |  | 1d | 2017-09-18 | 2017-09-18 |  |  |  | 0d | 李林; 吴小刚 | 32h |  |
| 82 | 2.4.1.1 | <新任务> | manual | 1d | 2017-09-18 | 2017-09-18 |  |  |  |  | 李林; 吴小刚 | 16h |  |
| 83 | 2.4.2 | **后台** |  | 1d | 2017-09-18 | 2017-09-18 |  |  |  | 0d | 李林; 吴小刚 | 32h |  |
| 84 | 2.4.2.1 | <新任务> | manual | 1d | 2017-09-18 | 2017-09-18 |  |  |  |  | 李林; 吴小刚 | 16h |  |
